# Cronograma_SGCONT

Schedule from MS Project, 2013-03-05 to 2013-05-23, 2 hours a day, A marks actual dates.
Microsoft

## Calendars

- Reduzido: Mon-Fri 08:00-09:00, 13:00-14:00; Sat-Sun off.

## Resources

| Resource |
| --- |
| Sávio Luiz |
| Vivianne Sousa |
| Rômulo Aurélio |
| Sávio Luiz/Rômulo Aurêlio |
| Mariana Victor |
| Vinícius Medeiros |
| vivia |
| Vivi |

## Schedule

| ID | WBS | Task | Type | Duration | Start | Finish | Predecessors | Complete | Remaining | Total slack | Free slack | Constraint | Resources | Work | Actual work |
| --- | --- | --- | --- | --- | --- | --- | --- | --- | --- | --- | --- | --- | --- | --- | --- |
| 1 | 1 | Ata de Reunião 04/03 |  | 2h | 2013-03-05 08:00 A | 2013-03-05 14:00 A |  | 100% |  |  |  | start no earlier than 2013-03-05 08:00 | Sávio Luiz | 2h | 2h |
| 2 | 2 | Ata de Reunião 11/03 |  | 2h | 2013-03-12 08:00 A | 2013-03-12 14:00 A |  | 100% |  |  |  |  | Sávio Luiz | 2h | 2h |
| 3 | 3 | **Planejamento** |  | 12d | 2013-03-12 08:00 A | 2013-03-27 14:00 |  | 69% | 3.75d | 41d |  |  |  | 83.92h | 59.52h |
| 4 | 3.1 | Criação do Cronograma |  | 6h | 2013-03-12 08:00 A | 2013-03-14 14:00 A |  | 100% |  |  |  | start no earlier than 2013-03-12 08:00 | Sávio Luiz | 6h | 6h |
| 5 | 3.2 | Plano de Gerência de Riscos |  | 2h | 2013-03-19 08:00 | 2013-03-19 14:00 | 6 |  |  | 8.75d | 0d | start no earlier than 2013-03-16 08:00 | Sávio Luiz | 2h |  |
| 6 | 3.3 | Criação da Sprint de Março |  | 2h | 2013-03-15 08:00 A | 2013-03-18 14:00 A | 4 | 100% |  |  |  |  | Sávio Luiz | 2h | 2h |
| 7 | 3.4 | Criação do Cronograma |  | 6h | 2013-03-12 08:00 A | 2013-03-14 14:00 A |  | 100% |  |  |  |  | Rômulo Aurélio | 11.92h | 11.92h |
| 8 | 3.5 | Documento de Visão (Planejamento do Projeto) |  | 4h | 2013-03-15 08:00 A | 2013-03-18 14:00 A | 7 | 100% |  |  |  | start no earlier than 2013-03-14 08:00 | Rômulo Aurélio | 4h | 4h |
| 9 | 3.6 | Termo de Abertura |  | 4h | 2013-03-19 08:00 A | 2013-03-20 14:00 A | 8 | 100% |  |  |  | start no earlier than 2013-03-13 08:00 | Rômulo Aurélio | 4h | 4h |
| 10 | 3.7 | Definição das metodologias |  | 4h | 2013-03-21 08:00 A | 2013-03-22 14:00 A | 9 | 100% |  |  |  |  | Rômulo Aurélio | 4h | 4h |
| 11 | 3.8 | Glossário |  | 8h | 2013-03-13 08:00 A | 2013-03-18 14:00 A |  | 100% |  |  |  | start no earlier than 2013-03-13 08:00 | Vivianne Sousa | 8h | 8h |
| 12 | 3.9 | Documento de Requisitos |  | 2h | 2013-03-19 08:00 A | 2013-03-19 14:00 A | 11 | 100% |  |  |  | start no earlier than 2013-03-14 08:00 | Vivianne Sousa | 2h | 2h |
| 13 | 3.10 | Levantamento e Criação da Arquitetura |  | 24h | 2013-03-12 08:00 A | 2013-03-27 14:00 |  | 60% | 9.6h | 7.5d | 0d |  | Mariana Victor | 24h | 14.4h |
| 14 | 3.11 | Layout de Telas |  | 16h | 2013-03-12 08:00 A | 2013-03-21 14:00 |  | 20% | 12.8h | 45d |  |  | Vinícius Medeiros | 16h | 3.2h |
| 15 | 4 | **Gerencia de Configuração** |  | 29d | 2013-03-22 08:00 A | 2013-05-01 14:00 |  | 64% | 10.4d | 0d |  |  |  | 58h | 37.2h |
| 16 | 4.1 | Desenvolvimento do Plano de Configuração |  | 8h | 2013-03-22 08:00 A | 2013-03-27 14:00 A | 14 | 100% |  |  |  |  | Vinícius Medeiros | 8h | 8h |
| 17 | 4.2 | Criação, gerenciamento e organização do Controle de Versão – Subversion |  | 16h | 2013-03-28 08:00 A | 2013-04-08 14:00 | 16 | 80% | 3.2h | 8.2d | 0d |  | Vinícius Medeiros | 16h | 12.8h |
| 18 | 4.3 | - Criação, gerenciamento e organização do Controle de Mudanças – Redmine |  | 16h | 2013-04-09 08:00 A | 2013-04-18 14:00 | 17 | 80% | 3.2h | 1.8d | 0d |  | Vinícius Medeiros | 16h | 12.8h |
| 19 | 4.4 | Auditoria do repositório (cumprimento dos padrões, respeito à organização, etc.) |  | 12h | 2013-04-19 08:00 A | 2013-04-26 14:00 | 18 | 20% | 9.6h | 0.6d | 0d |  | Vinícius Medeiros | 12h | 2.4h |
| 20 | 4.5 | Release Notes – Será desenvolvido a cada versão publicada do sistema |  | 6h | 2013-04-29 08:00 A | 2013-05-01 14:00 | 19 | 20% | 4.8h | 0d |  |  | Vinícius Medeiros | 6h | 1.2h |
| 21 | 5 | **Especificações e diagrama de caso de uso** |  | 11d | 2013-03-20 08:00 A | 2013-04-03 14:00 |  | 26% | 8.12d | 13.25d |  |  |  | 26h | 6.8h |
| 22 | 5.1 | Informar Empresa Contábil |  | 1h | 2013-03-20 08:00 A | 2013-03-20 09:00 | 12 | 80% | 0.2h | 7d | 0d |  | Vivianne Sousa | 1h | 0.8h |
| 23 | 5.2 | Inserir Cliente |  | 4h | 2013-03-20 13:00 A | 2013-03-22 09:00 | 22 | 60% | 1.6h | 5.8d | 0d |  | Vivianne Sousa | 4h | 2.4h |
| 24 | 5.3 | Manter Cliente |  | 4h | 2013-03-22 13:00 A | 2013-03-26 09:00 | 23 | 60% | 1.6h | 4.6d | 0d |  | Vivianne Sousa | 4h | 2.4h |
| 25 | 5.4 | Inserir Contador |  | 1h | 2013-03-26 13:00 A | 2013-03-26 14:00 | 24 | 60% | 0.4h | 4.3d | 0d |  | Vivianne Sousa | 1h | 0.6h |
| 26 | 5.5 | Manter Contador |  | 2h | 2013-03-27 08:00 | 2013-03-27 14:00 | 25 |  |  | 64d | 0d |  | Vivianne Sousa | 2h |  |
| 27 | 5.6 | Inserir Usuário |  | 1h | 2013-03-28 08:00 A | 2013-03-28 09:00 | 26 | 60% | 0.4h | 4d | 0d |  | Vivianne Sousa | 1h | 0.6h |
| 28 | 5.7 | Manter Usuário |  | 2h | 2013-03-28 13:00 | 2013-03-29 09:00 | 27 |  |  | 64d | 0d |  | Vivianne Sousa | 2h |  |
| 29 | 5.8 | Inserir Setor | milestone | 0h | 2013-03-29 09:00 | 2013-03-29 09:00 | 28 |  |  | 9d | 0d |  | Vivianne Sousa |  |  |
| 30 | 5.9 | Manter Setor | milestone | 0h | 2013-03-29 09:00 | 2013-03-29 09:00 | 29 |  |  | 9d | 0d |  | Vivianne Sousa |  |  |
| 31 | 5.10 | Informar Agenda |  | 4h | 2013-03-25 08:00 | 2013-03-26 14:00 | 10 |  |  | 42d | 0d |  | Rômulo Aurélio | 4h |  |
| 32 | 5.11 | Inserir Despesa |  | 1h | 2013-03-29 13:00 | 2013-03-29 14:00 | 30 |  |  | 9d | 0d |  | Vivianne Sousa | 1h |  |
| 33 | 5.12 | Manter Despesa |  | 2h | 2013-04-01 08:00 | 2013-04-01 14:00 | 32 |  |  | 9d | 0d |  | Vivianne Sousa | 2h |  |
| 34 | 5.13 | Inserir Receita |  | 1h | 2013-04-02 08:00 | 2013-04-02 09:00 | 33 |  |  | 9d | 0d |  | Vivianne Sousa | 1h |  |
| 35 | 5.14 | Manter Receita |  | 2h | 2013-04-02 13:00 | 2013-04-03 09:00 | 34 |  |  | 9d | 0d |  | Vivianne Sousa | 2h |  |
| 36 | 5.15 | Efetuar Login |  | 1h | 2013-04-03 13:00 | 2013-04-03 14:00 | 35 |  |  | 9d | 0d |  | Vivianne Sousa | 1h |  |
| 37 | 6 | Manual de utilização |  | 24h | 2013-05-02 08:00 | 2013-05-17 14:00 | 20 |  |  | 0d |  |  | Vinícius Medeiros | 24h |  |

| ID | WBS | Task | Type | Duration | Start | Finish | Predecessors | Complete | Remaining | Total slack | Free slack | Resources | Work | Actual work |
| --- | --- | --- | --- | --- | --- | --- | --- | --- | --- | --- | --- | --- | --- | --- |
| 38 | 7 | **Arquitetura** |  | 53d | 2013-03-12 08:00 A | 2013-05-23 14:00 |  | 3% | 51.17d | 30.5d |  |  | 266h | 9.2h |
| 39 | 7.1 | Definição e Implementação (Feito no planejamento) | milestone | 0h | 2013-03-12 08:00 | 2013-03-12 08:00 |  |  |  | 46d |  |  |  |  |
| 40 | 7.2 | Layout de Telas (Feito no planejamento) | milestone | 0h | 2013-03-12 08:00 | 2013-03-12 08:00 |  |  |  | 46d |  |  |  |  |
| 41 | 7.3 | Documento de Arquitetura |  | 6h | 2013-03-28 08:00 | 2013-04-01 14:00 | 13 |  |  | 68.5d | 0d | Mariana Victor | 6h |  |
| 42 | 7.4 | **Diagramas UML** |  | 11.5d | 2013-03-20 08:00 A | 2013-04-04 09:00 |  | 5% | 10.94d | 35.5d |  |  | 24.5h | 1.2h |
| 43 | 7.4.1 | Diagrama de Arquitetura - Revisão/Atualização |  | 2h | 2013-04-02 08:00 A | 2013-04-02 14:00 | 41 | 60% | 0.8h | 7.5d | 0d | Mariana Victor | 2h | 1.2h |
| 44 | 7.4.2 | **Diagrama de Classes** |  | 11.5d | 2013-03-20 08:00 | 2013-04-04 09:00 |  |  |  | 35.5d |  |  | 17h |  |
| 45 | 7.4.2.1 | Efetuar Login - Revisão/Atualização |  | 0.5h | 2013-03-20 08:00 | 2013-03-20 08:30 | 5 |  |  | 40d | 0d | Sávio Luiz | 0.5h |  |
| 46 | 7.4.2.2 | Inserir Empresa Contábil - Revisão/Atualização |  | 0.5h | 2013-03-20 08:30 | 2013-03-20 09:00 | 45 |  |  | 40d | 0d | Sávio Luiz | 0.5h |  |
| 47 | 7.4.2.3 | Inserir Cliente - Revisão/Atualização |  | 2h | 2013-03-20 13:00 | 2013-03-21 09:00 | 46 |  |  | 8.75d | 0d | Sávio Luiz | 2h |  |
| 48 | 7.4.2.4 | Manter Cliente - Criação |  | 2h | 2013-03-21 13:00 | 2013-03-22 09:00 | 47 |  |  | 8.75d | 0d | Sávio Luiz | 2h |  |
| 49 | 7.4.2.5 | Inserir Despesa - Revisão/Atualização |  | 0.5h | 2013-03-22 13:00 | 2013-03-22 13:30 | 48 |  |  | 8.75d | 0d | Sávio Luiz | 0.5h |  |
| 50 | 7.4.2.6 | Manter Despesa - Criação |  | 1h | 2013-03-22 13:30 | 2013-03-25 08:30 | 49 |  |  | 40d | 0d | Sávio Luiz | 1h |  |
| 51 | 7.4.2.7 | Inserir Receita - Revisão/Atualização |  | 0.5h | 2013-03-25 08:30 | 2013-03-25 09:00 | 50 |  |  | 40d | 0d | Sávio Luiz | 0.5h |  |
| 52 | 7.4.2.8 | Manter Receita - Criação |  | 1h | 2013-03-25 13:00 | 2013-03-25 14:00 | 51 |  |  | 40d | 0d | Sávio Luiz | 1h |  |
| 53 | 7.4.2.9 | Inserir Contador - Criação |  | 1.5h | 2013-03-26 08:00 | 2013-03-26 13:30 | 52 |  |  | 8.75d | 0d | Sávio Luiz | 1.5h |  |
| 54 | 7.4.2.10 | Manter Contador - Criação |  | 1.5h | 2013-03-26 13:30 | 2013-03-27 09:00 | 53 |  |  | 40d | 0d | Sávio Luiz | 1.5h |  |
| 55 | 7.4.2.11 | Inserir Usuário - Criação |  | 1.5h | 2013-03-27 13:00 | 2013-03-28 08:30 | 54 |  |  | 8.75d | 0d | Sávio Luiz | 1.5h |  |
| 56 | 7.4.2.12 | Manter Usuário - Criação |  | 1.5h | 2013-03-28 08:30 | 2013-03-28 14:00 | 55 |  |  | 40d | 0d | Sávio Luiz | 1.5h |  |
| 57 | 7.4.2.13 | Inserir Setor - Criação | milestone | 0h | 2013-03-28 14:00 | 2013-03-28 14:00 | 56 |  |  | 40d | 0d | Sávio Luiz |  |  |
| 58 | 7.4.2.14 | Manter Setor - Criação | milestone | 0h | 2013-03-28 14:00 | 2013-03-28 14:00 | 57 |  |  | 40d |  | Sávio Luiz |  |  |
| 59 | 7.4.2.15 | Informar Agenda - Criação |  | 3h | 2013-04-03 08:00 | 2013-04-04 09:00 | 43 |  |  | 30d | 0d | Mariana Victor | 3h |  |
| 60 | 7.4.3 | **Diagrama de Seqüência** |  | 2.5d | 2013-03-27 08:00 | 2013-03-29 09:00 |  |  |  | 10.25d |  |  | 5h |  |
| 61 | 7.4.3.1 | Efetuar Login - Revisão/Atualização |  | 0.5h | 2013-03-27 08:00 | 2013-03-27 08:30 | 31 |  |  | 47.75d | 0d | Rômulo Aurélio | 0.5h |  |
| 62 | 7.4.3.2 | Inserir Cliente - Revisão/Atualização |  | 1h | 2013-03-27 08:30 | 2013-03-27 13:30 | 61 |  |  | 47.75d | 0d | Rômulo Aurélio | 1h |  |
| 63 | 7.4.3.3 | Inserir Despesa - Revisão/Atualização |  | 0.5h | 2013-03-27 13:30 | 2013-03-27 14:00 | 62 |  |  | 47.75d | 0d | Rômulo Aurélio | 0.5h |  |
| 64 | 7.4.3.4 | Inserir Receita - Revisão/Atualização |  | 0.5h | 2013-03-28 08:00 | 2013-03-28 08:30 | 63 |  |  | 47.75d | 0d | Rômulo Aurélio | 0.5h |  |
| 65 | 7.4.3.5 | Inserir Empresa Contábil - Revisão/Atualização |  | 0.5h | 2013-03-28 08:30 | 2013-03-28 09:00 | 64 |  |  | 47.75d | 0d | Rômulo Aurélio | 0.5h |  |
| 66 | 7.4.3.6 | Informar Agenda |  | 2h | 2013-03-28 13:00 | 2013-03-29 09:00 | 65 |  |  | 47.75d | 0d | Rômulo Aurélio | 2h |  |
| 67 | 7.4.4 | Diagrama de Distribuição - Revisão/Atualização |  | 0.5h | 2013-03-29 13:00 | 2013-03-29 13:30 | 66 |  |  | 47.75d | 0d | Rômulo Aurélio | 0.5h |  |
| 68 | 7.5 | Modelo de Banco de Dados - Revisão/Atualização |  | 8h | 2013-04-01 13:00 A | 2013-04-05 09:00 A | 58 | 100% |  |  |  | Sávio Luiz | 8h | 8h |

| ID | WBS | Task | Type | Duration | Start | Finish | Predecessors | Total slack | Free slack | Resources | Work |
| --- | --- | --- | --- | --- | --- | --- | --- | --- | --- | --- | --- |
| 69 | 7.6 | **Implementação** |  | 31.75d | 2013-03-29 13:30 | 2013-05-14 09:00 |  | 12.25d |  |  | 136h |
| 70 | 7.6.1 | Efetuar Login |  | 4h | 2013-03-29 13:30 | 2013-04-02 13:30 | 67 | 37.25d |  | Mariana Victor | 4h |
| 71 | 7.6.2 | Inserir Empresa Contábil |  | 8h | 2013-04-04 08:00 | 2013-04-09 14:00 | 36 | 9d | 0d | Vivianne Sousa | 8h |
| 72 | 7.6.3 | Inserir Cliente |  | 16h | 2013-04-04 13:00 | 2013-04-16 09:00 | 59 | 30d | 0d | Mariana Victor | 16h |
| 73 | 7.6.4 | Manter Cliente |  | 18h | 2013-04-10 08:00 | 2013-04-22 14:00 | 71 | 9d | 0d | Vivianne Sousa | 18h |
| 74 | 7.6.5 | Inserir Despesa |  | 4h | 2013-04-23 08:00 | 2013-04-24 14:00 | 73 | 9d | 0d | Vivianne Sousa | 4h |
| 75 | 7.6.6 | Manter Despesa |  | 6h | 2013-04-25 08:00 | 2013-04-29 14:00 | 74 | 9d | 0d | Vivianne Sousa | 6h |
| 76 | 7.6.7 | Inserir Receita |  | 4h | 2013-03-29 13:30 | 2013-04-02 13:30 | 67 | 10.25d | 0d | Rômulo Aurélio | 4h |
| 77 | 7.6.8 | Manter Receita |  | 6h | 2013-04-02 13:30 | 2013-04-05 13:30 | 76 | 10.25d | 0d | Rômulo Aurélio | 6h |
| 78 | 7.6.9 | Inserir Contador |  | 4h | 2013-04-05 13:30 | 2013-04-09 13:30 | 77 | 10.25d | 0d | Rômulo Aurélio | 4h |
| 79 | 7.6.10 | Manter Contador |  | 6h | 2013-04-09 13:30 | 2013-04-12 13:30 | 78 | 10.25d | 0d | Rômulo Aurélio | 6h |
| 80 | 7.6.11 | Inserir Usuário |  | 8h | 2013-04-12 13:30 | 2013-04-18 13:30 | 79 | 19.25d | 0d | Rômulo Aurélio | 8h |
| 81 | 7.6.12 | Manter Usuário |  | 12h | 2013-04-18 13:30 | 2013-04-26 13:30 | 80 | 19.25d | 0d | Rômulo Aurélio | 12h |
| 82 | 7.6.13 | Inserir Setor | milestone | 0h | 2013-04-26 13:30 | 2013-04-26 13:30 | 81 | 19.25d | 0d | Rômulo Aurélio |  |
| 83 | 7.6.14 | Manter Setor | milestone | 0h | 2013-04-26 13:30 | 2013-04-26 13:30 | 82 | 19.25d |  | Rômulo Aurélio |  |
| 84 | 7.6.15 | Informar Agenda |  | 40h | 2013-04-16 13:00 | 2013-05-14 09:00 | 72 | 15.5d |  | Mariana Victor | 40h |
| 85 | 7.7 | Manual de instalação (implantação) - Criação |  | 8h | 2013-05-20 08:00 | 2013-05-23 14:00 | 37 | 0d |  | Vinícius Medeiros | 8h |
| 86 | 7.8 | **Testes** |  | 25.5d | 2013-04-05 13:00 | 2013-05-10 14:00 |  | 11.25d |  |  | 83.5h |
| 87 | 7.8.1 | Plano de testes |  | 4h | 2013-04-30 08:00 | 2013-05-01 14:00 | 75 | 9d | 0d | Rômulo Aurélio | 4h |
| 88 | 7.8.2 | Projeto de testes |  | 4h | 2013-04-05 13:00 | 2013-04-09 09:00 | 68 | 7.75d | 0d | Sávio Luiz | 4h |
| 89 | 7.8.3 | **Registros dos testes** |  | 23.5d | 2013-04-09 13:00 | 2013-05-10 14:00 |  | 11.25d |  |  | 75.5h |
| 90 | 7.8.3.1 | **Casos de Teste** |  | 18.5d | 2013-04-09 13:00 | 2013-05-03 14:00 |  | 11.25d |  |  | 20.5h |
| 91 | 7.8.3.1.1 | Efetuar Login |  | 0.5h | 2013-04-09 13:00 | 2013-04-09 13:30 | 88 | 11.25d | 0d | Sávio Luiz | 0.5h |
| 92 | 7.8.3.1.2 | Inserir Empresa Contábil |  | 2h | 2013-04-09 13:30 | 2013-04-10 13:30 | 91 | 7.75d | 0d | Sávio Luiz | 2h |
| 93 | 7.8.3.1.3 | Inserir Cliente |  | 2h | 2013-04-10 13:30 | 2013-04-11 13:30 | 92 | 7.75d | 0d | Sávio Luiz | 2h |
| 94 | 7.8.3.1.4 | Manter Cliente |  | 2h | 2013-04-11 13:30 | 2013-04-12 13:30 | 93 | 7.75d | 0d | Sávio Luiz | 2h |
| 95 | 7.8.3.1.5 | Inserir Despesa |  | 1h | 2013-04-12 13:30 | 2013-04-15 08:30 | 94 | 7.75d | 0d | Sávio Luiz | 1h |
| 96 | 7.8.3.1.6 | Manter Despesa |  | 1h | 2013-04-15 08:30 | 2013-04-15 13:30 | 95 | 7.75d | 0d | Sávio Luiz | 1h |
| 97 | 7.8.3.1.7 | Inserir Receita |  | 1h | 2013-04-15 13:30 | 2013-04-16 08:30 | 96 | 7.75d | 0d | Sávio Luiz | 1h |
| 98 | 7.8.3.1.8 | Manter Receita |  | 1h | 2013-04-16 08:30 | 2013-04-16 13:30 | 97 | 7.75d | 0d | Sávio Luiz | 1h |
| 99 | 7.8.3.1.9 | Inserir Contador |  | 1h | 2013-04-16 13:30 | 2013-04-17 08:30 | 98 | 7.75d | 0d | Sávio Luiz | 1h |
| 100 | 7.8.3.1.10 | Manter Contador |  | 1h | 2013-04-17 08:30 | 2013-04-17 13:30 | 99 | 7.75d | 0d | Sávio Luiz | 1h |
| 101 | 7.8.3.1.11 | Inserir Usuário |  | 1h | 2013-04-17 13:30 | 2013-04-18 08:30 | 100 | 7.75d | 0d | Sávio Luiz | 1h |
| 102 | 7.8.3.1.12 | Manter Usuário |  | 1h | 2013-04-18 08:30 | 2013-04-18 13:30 | 101 | 7.75d | 0d | Sávio Luiz | 1h |
| 103 | 7.8.3.1.13 | Inserir Setor |  | 1h | 2013-04-18 13:30 | 2013-04-19 08:30 | 102 | 11.25d | 0d | Sávio Luiz | 1h |
| 104 | 7.8.3.1.14 | Manter Setor |  | 1h | 2013-04-19 08:30 | 2013-04-19 13:30 | 103 | 24.25d |  | Sávio Luiz | 1h |
| 105 | 7.8.3.1.15 | Informar Agenda |  | 4h | 2013-05-02 08:00 | 2013-05-03 14:00 | 87 | 9d | 0d | Rômulo Aurélio | 4h |

| ID | WBS | Task | Type | Duration | Start | Finish | Predecessors | Total slack | Free slack | Resources | Work |
| --- | --- | --- | --- | --- | --- | --- | --- | --- | --- | --- | --- |
| 106 | 7.8.3.2 | **Automatização de Testes** |  | 11.75d | 2013-04-19 08:30 | 2013-05-06 14:00 |  | 11.25d |  |  | 18.5h |
| 107 | 7.8.3.2.1 | Efetuar Login |  | 0.5h | 2013-04-19 08:30 | 2013-04-19 09:00 | 103 | 11.25d | 0d | Sávio Luiz | 0.5h |
| 108 | 7.8.3.2.2 | Inserir Empresa Contábil |  | 2h | 2013-04-19 13:00 | 2013-04-22 09:00 | 107 | 11.25d | 0d | Sávio Luiz | 2h |
| 109 | 7.8.3.2.3 | Inserir Cliente |  | 2h | 2013-04-22 13:00 | 2013-04-23 09:00 | 108 | 11.25d | 0d | Sávio Luiz | 2h |
| 110 | 7.8.3.2.4 | Manter Cliente |  | 2h | 2013-04-23 13:00 | 2013-04-24 09:00 | 109 | 11.25d | 0d | Sávio Luiz | 2h |
| 111 | 7.8.3.2.5 | Inserir Despesa |  | 1h | 2013-05-06 08:00 | 2013-05-06 09:00 | 105 | 9d | 0d | Rômulo Aurélio | 1h |
| 112 | 7.8.3.2.6 | Manter Despesa |  | 1h | 2013-05-06 13:00 | 2013-05-06 14:00 | 111 | 9d | 0d | Rômulo Aurélio | 1h |
| 113 | 7.8.3.2.7 | Inserir Receita |  | 1h | 2013-04-30 08:00 | 2013-04-30 09:00 | 75 | 17.5d | 0d | Vivianne Sousa | 1h |
| 114 | 7.8.3.2.8 | Manter Receita |  | 1h | 2013-04-30 13:00 | 2013-04-30 14:00 | 113 | 17.5d | 0d | Vivianne Sousa | 1h |
| 115 | 7.8.3.2.9 | Inserir Contador |  | 1h | 2013-05-01 08:00 | 2013-05-01 09:00 | 114 | 17.5d | 0d | Vivianne Sousa | 1h |
| 116 | 7.8.3.2.10 | Manter Contador |  | 1h | 2013-05-01 13:00 | 2013-05-01 14:00 | 115 | 17.5d | 0d | Vivianne Sousa | 1h |
| 117 | 7.8.3.2.11 | Inserir Usuário |  | 1h | 2013-05-02 08:00 | 2013-05-02 09:00 | 116 | 17.5d | 0d | Vivianne Sousa | 1h |
| 118 | 7.8.3.2.12 | Manter Usuário |  | 1h | 2013-05-02 13:00 | 2013-05-02 14:00 | 117 | 17.5d | 0d | Vivianne Sousa | 1h |
| 119 | 7.8.3.2.13 | Inserir Setor | milestone | 0h | 2013-04-24 09:00 | 2013-04-24 09:00 | 110 | 11.25d | 0d | Sávio Luiz |  |
| 120 | 7.8.3.2.14 | Manter Setor | milestone | 0h | 2013-04-24 09:00 | 2013-04-24 09:00 | 119 | 11.25d | 0d | Sávio Luiz |  |
| 121 | 7.8.3.2.15 | Informar Agenda |  | 4h | 2013-04-24 13:00 | 2013-04-26 09:00 | 120 | 11.25d | 0d | Sávio Luiz | 4h |
| 122 | 7.8.3.3 | **Execução de Testes** |  | 10.5d | 2013-04-26 13:00 | 2013-05-10 14:00 |  | 9d |  |  | 20.5h |
| 123 | 7.8.3.3.1 | Efetuar Login |  | 0.5h | 2013-04-26 13:00 | 2013-04-26 13:30 | 121 | 11.25d | 0d | Sávio Luiz | 0.5h |
| 124 | 7.8.3.3.2 | Inserir Empresa Contábil |  | 2h | 2013-04-26 13:30 | 2013-04-29 13:30 | 123 | 11.25d | 0d | Sávio Luiz | 2h |
| 125 | 7.8.3.3.3 | Inserir Cliente |  | 2h | 2013-04-29 13:30 | 2013-04-30 13:30 | 124 | 11.25d | 0d | Sávio Luiz | 2h |
| 126 | 7.8.3.3.4 | Manter Cliente |  | 2h | 2013-05-07 08:00 | 2013-05-07 14:00 | 112 | 9d | 0d | Rômulo Aurélio | 2h |
| 127 | 7.8.3.3.5 | Inserir Despesa |  | 1h | 2013-05-08 08:00 | 2013-05-08 09:00 | 126 | 9d | 0d | Rômulo Aurélio | 1h |
| 128 | 7.8.3.3.6 | Manter Despesa |  | 1h | 2013-05-08 13:00 | 2013-05-08 14:00 | 127 | 9d | 0d | Rômulo Aurélio | 1h |
| 129 | 7.8.3.3.7 | Inserir Receita |  | 1h | 2013-05-09 08:00 | 2013-05-09 09:00 | 128 | 9d | 0d | Rômulo Aurélio | 1h |
| 130 | 7.8.3.3.8 | Manter Receita |  | 1h | 2013-05-09 13:00 | 2013-05-09 14:00 | 129 | 9d | 0d | Rômulo Aurélio | 1h |
| 131 | 7.8.3.3.9 | Inserir Contador |  | 1h | 2013-05-10 08:00 | 2013-05-10 09:00 | 130 | 9d | 0d | Rômulo Aurélio | 1h |
| 132 | 7.8.3.3.10 | Manter Contador |  | 1h | 2013-05-10 13:00 | 2013-05-10 14:00 | 131 | 9d |  | Rômulo Aurélio | 1h |
| 133 | 7.8.3.3.11 | Inserir Usuário |  | 1h | 2013-05-03 08:00 | 2013-05-03 09:00 | 118 | 17.5d | 0d | Vivianne Sousa | 1h |
| 134 | 7.8.3.3.12 | Manter Usuário |  | 1h | 2013-05-03 13:00 | 2013-05-03 14:00 | 133 | 22d |  | Vivianne Sousa | 1h |
| 135 | 7.8.3.3.13 | Inserir Setor |  | 1h | 2013-05-03 13:00 | 2013-05-03 14:00 | 133 | 17.5d | 0d | Vivianne Sousa | 1h |
| 136 | 7.8.3.3.14 | Manter Setor |  | 1h | 2013-05-06 08:00 | 2013-05-06 09:00 | 135 | 17.5d | 0d | Vivianne Sousa | 1h |
| 137 | 7.8.3.3.15 | Informar Agenda |  | 4h | 2013-04-30 13:30 | 2013-05-02 13:30 | 125 | 11.25d | 0d | Sávio Luiz | 4h |
| 138 | 7.8.3.4 | Teste Integração |  | 8h | 2013-05-02 13:30 | 2013-05-08 13:30 | 137 | 11.25d |  | Sávio Luiz | 8h |
| 139 | 7.8.3.5 | Teste Integração |  | 8h | 2013-05-06 13:00 | 2013-05-10 09:00 | 136 | 17.5d |  | Vivianne Sousa | 8h |
